# MITO & Ticketsir-Sprint 30

Schedule from MS Project, 2025-09-30 to 2026-07-01, A marks actual dates.
QuantumPM

## Calendars

- Standard: Mon-Fri 08:00-12:00, 13:00-17:00; Sat-Sun off.

## Resources

| Resource |
| --- |
| Vakil |
| Rishabh |
| Monu |
| Jayant |
| Iyanu |
| Akshita |
| Mumtaz |
| Funmi |
| Robin |
| Sakshi |
| Amit |
| Sakshi2 |
| Vk |

## Schedule

| ID | WBS | Task | Type | Duration | Start | Finish | Predecessors | Complete | Remaining | Actual start | Actual finish | Total slack | Constraint | Resources | Work | Actual work |
| --- | --- | --- | --- | --- | --- | --- | --- | --- | --- | --- | --- | --- | --- | --- | --- | --- |
| 2 | 1 | **TicketSir** |  | 10d? | 2026-02-19 | 2026-03-04 |  | 87% | 1.33d? | 2026-02-10 |  |  |  |  | 624h | 541.2h |
| 3 | 1.1 | TicketSir Bug Fixes |  | 1d? | 2026-02-27 A | 2026-02-27 A |  | 100% |  |  |  |  | finish no earlier than 2026-02-27 | Rishabh | 8h | 8h |
| 4 | 1.2 | 7998 – TicketSir (Pre sale & Waitlist Booking)-Mobile App |  | 1d? | 2026-02-24 A | 2026-02-24 A |  | 100% |  |  |  |  | finish no earlier than 2026-02-24 | Jayant | 8h | 8h |
| 5 | 1.3 | Label changes |  | 1d? | 2026-02-24 A | 2026-02-24 A |  | 100% |  |  |  |  | finish no earlier than 2026-02-24 | Jayant | 8h | 8h |
| 6 | 1.4 | 7839 – Biometric Login (TicketSir & Cokobar)-Mobile App |  | 31d? | 2026-02-10 A | 2026-03-24 |  | 95% | 1.55d? |  |  | 71d | finish no earlier than 2026-03-24 | Jayant | 248h | 235.6h |
| 7 | 1.5 | 7923 – DB Migration of TicketSir |  | 44d? | 2026-03-03 A | 2026-05-01 |  | 80% | 8.8d? |  |  | 43d | finish no earlier than 2026-05-01 | Rishabh | 352h | 281.6h |
| 9 | 2 | **Rhemito** |  | 10d? | 2026-02-19 | 2026-03-04 |  | 100% |  | 2026-02-06 | 2026-04-10 |  |  |  | 256h | 256h |
| 10 | 2.1 | **8058: Rhemito bug fixes** |  | 12d? | 2026-02-19 | 2026-03-06 A |  | 100% |  | 2026-02-06 |  |  |  |  | 128h | 128h |
| 11 | 2.1.1 | Backend | milestone | 0d? | 2026-02-06 A | 2026-02-06 A |  | 100% |  |  |  |  |  | Rishabh |  |  |
| 12 | 2.1.2 | Front end: Web |  | 8d? | 2026-02-19 A | 2026-03-02 A |  | 100% |  |  |  |  | finish no earlier than 2026-03-02 | Monu | 64h | 64h |
| 13 | 2.1.3 | Rhemito bug fixes: Mobile App |  | 8d? | 2026-02-25 A | 2026-03-06 A | 4, 5 | 100% |  |  |  |  | finish no earlier than 2026-03-06 | Jayant | 64h | 64h |
| 14 | 2.2 | **Notification** |  | 13d? | 2026-03-25 A | 2026-04-10 A |  | 100% |  |  |  |  |  |  | 128h | 128h |
| 15 | 2.2.1 | Backend |  | 1d? | 2026-04-10 A | 2026-04-10 A |  | 100% |  |  |  |  | finish no earlier than 2026-04-10 | Rishabh | 8h | 8h |
| 16 | 2.2.2 | Front end: web |  | 2d? | 2026-04-02 A | 2026-04-03 A |  | 100% |  |  |  |  | finish no earlier than 2026-04-03 | Monu | 16h | 16h |
| 17 | 2.2.3 | Mobile App |  | 13d? | 2026-03-25 A | 2026-04-10 A | 6 | 100% |  |  |  |  | finish no earlier than 2026-04-14 | Jayant | 104h | 104h |
| 18 | 3 | 7744 – Pay by Bank & Bank Transfer for New Customers |  | 1d? | 2026-02-19 | 2026-02-19 |  |  |  |  |  | 94d | start no earlier than 2026-02-19 | Vakil | 8h |  |
| 19 | 4 | Rhemito-MobileApp: Help Tickets |  | 12d? | 2026-03-26 A | 2026-04-10 A |  | 100% |  |  |  |  | finish no earlier than 2026-04-10 | Jayant | 96h | 96h |
| 20 | 5 | **Manual Bank Transfer** |  | 10d? | 2026-04-15 A | 2026-04-28 A |  | 100% |  |  |  |  |  |  | 120h | 120h |
| 21 | 5.1 | Mobile App: Manual Bank Transfer Flow |  | 10d? | 2026-04-15 A | 2026-04-28 A |  | 100% |  |  |  |  | finish no earlier than 2026-04-28 | Jayant | 80h | 80h |
| 22 | 5.2 | Web: Manual Bank Transfer |  | 5d? | 2026-04-20 A | 2026-04-24 A |  | 100% |  |  |  |  | start no earlier than 2026-04-20 | Monu | 40h | 40h |
| 23 | 6 | 8057: KYC Bug Fixes | manual | 1d | 2026-02-19 | 2026-02-19 |  |  |  |  |  |  |  | Vakil | 8h |  |
| 24 | 7 | Mobile APP: Resend Transaction |  | 1d? | 2025-09-30 | 2025-09-30 |  |  |  |  |  | 196d |  | Jayant | 8h |  |
| 25 | 8 | **Cancel Transaction** |  | 1d? | 2025-09-30 | 2025-09-30 |  |  |  |  |  | 196d |  |  | 24h |  |
| 26 | 8.1 | Backend |  | 1d? | 2025-09-30 | 2025-09-30 |  |  |  |  |  | 196d |  | Rishabh | 8h |  |
| 27 | 8.2 | Web Frontend |  | 1d? | 2025-09-30 | 2025-09-30 |  |  |  |  |  | 196d |  | Monu | 8h |  |
| 28 | 8.3 | Mobile App |  | 1d? | 2025-09-30 | 2025-09-30 |  |  |  |  |  | 196d |  | Jayant | 8h |  |

Notes:
- 3: ·Add gate close date time and age description on ticket PDF (ensure all basic items are on Web, App, and ticket).
- 4: * .; ; ·;; ⦁Counter shown even when user cannot use it / 1Paid wishlist and Notify Me options not shown / 2Inconsistent radio button selection / 3Amount rounding issue
- 6: Blocked as API is not deployed on LIVE working on Staging. / Will be done with DB Migration.
- 12: * .; ; ·;; ⦁App: Collection account and wallet balance data resetting to blank / 1App: Send money not picking currency from collection account or wallet / 2Bank Transfer: Account display should be on the last page and display time increased
- 18: * .; ; ·;; ⦁Card option not available for new customers / 1Implement Plaid: Pay within X mins → Instant / 2Show countdown / 3Copy Paystack for Bank Transfer

| ID | WBS | Task | Duration | Start | Finish | Predecessors | Complete | Remaining | Actual start | Actual finish | Total slack | Free slack | Constraint | Resources | Work | Actual work |
| --- | --- | --- | --- | --- | --- | --- | --- | --- | --- | --- | --- | --- | --- | --- | --- | --- |
| 30 | 9 | **7986 – Affiliate Dashboard (OnePipe Integration)** | 0d? | 2026-02-11 | 2026-02-11 |  | 73% | 0d? | 2026-02-12 |  |  |  |  |  | 160h | 116h |
| 31 | 9.1 | Frontend: web | 1d? | 2026-02-12 | 2026-02-12 |  |  |  |  |  | 99d |  |  | Monu | 8h |  |
| 32 | 9.2 | Backend | 1d? | 2026-02-12 A | 2026-02-12 A |  | 100% |  |  |  |  |  |  | Sakshi | 8h | 8h |
| 33 | 9.3 | Design | 1d? | 2026-02-12 | 2026-02-12 |  |  |  |  |  | 99d |  |  | Iyanu | 8h |  |
| 34 | 9.4 | OnePipe Enhancement | 14d? | 2026-02-19 A | 2026-05-05 | 81 | 90% | 1.4d? |  |  | 41.6d |  | finish no earlier than 2026-03-10 | Vakil | 112h | 100.8h |
| 35 | 9.5 | Biller Setup for Onepipe | 3d? | 2026-04-29 A | 2026-05-01 |  | 30% | 2.1d? |  |  | 43d |  | finish no earlier than 2026-05-01 | Sakshi | 24h | 7.2h |
| 37 | 10 | **7996 – Role based Login on Mito Admin** | 9d? | 2026-02-19 A | 2026-03-03 |  | 100% |  |  | 2026-03-24 |  |  |  |  | 264h | 264h |
| 38 | 10.1 | Backend | 24d? | 2026-02-19 A | 2026-03-24 A |  | 100% |  |  |  |  |  | finish no earlier than 2026-03-24 | Sakshi | 192h | 192h |
| 39 | 10.2 | Frontend | 9d? | 2026-02-19 A | 2026-03-03 A |  | 100% |  |  |  |  |  | finish no earlier than 2026-03-03 | Monu | 72h | 72h |
| 41 | 11 | **OBO** | 17d? | 2026-02-19 A | 2026-03-13 |  | 75% | 4.33d? |  |  |  |  |  |  | 528h | 393.6h |
| 42 | 11.1 | Frontend | 42d? | 2026-02-19 A | 2026-05-27 | 46 | 60% | 16.8d? |  |  | 25.2d |  | finish no earlier than 2026-04-17 | Monu | 336h | 201.6h |
| 43 | 11.2 | Backend | 24d? | 2026-02-19 A | 2026-04-01 A |  | 100% |  |  |  |  |  | finish no earlier than 2026-04-01 | Rishabh | 192h | 192h |
| 45 | 12 | **Rate Manager** | 14d? | 2026-02-19 A | 2026-03-10 |  | 66% | 4.69d? |  |  |  |  |  |  | 515.2h | 342.48h |
| 46 | 12.1 | Frontend | 15.4d? | 2026-02-19 A | 2026-05-04 |  | 65% | 5.39d? |  |  | 0d |  | finish no earlier than 2026-05-04 | Monu | 123.2h | 80.08h |
| 47 | 12.2 | Backend-Config Setup | 6d? | 2026-03-09 A | 2026-03-16 A |  | 100% |  |  |  |  |  | finish no earlier than 2026-03-16 | Sakshi | 48h | 48h |
| 48 | 12.3 | Backend-Overrides | 6d? | 2026-03-17 A | 2026-03-24 A |  | 100% |  |  |  |  |  | finish no earlier than 2026-03-24 | Sakshi | 48h | 48h |
| 49 | 12.4 | Backend-Cross Rates | 26d? | 2026-03-25 A | 2026-04-29 |  | 80% | 5.2d? |  |  | 34d | 0d | finish no earlier than 2026-04-29 | Sakshi | 208h | 166.4h |
| 50 | 12.5 | Backend-Existing Affiliate Migration | 11d? | 2026-04-30 | 2026-05-14 | 49 |  |  |  |  | 34d |  | finish no earlier than 2026-04-28 | Sakshi | 88h |  |
| 52 | 13 | **Customer support portal** | 12d? | 2026-03-25 A | 2026-04-09 A |  | 100% |  |  |  |  |  |  |  | 128h | 128h |
| 53 | 13.1 | Front end | 12d? | 2026-03-25 A | 2026-04-09 A |  | 100% |  |  |  |  |  | finish no earlier than 2026-04-09 | Monu | 96h | 96h |
| 54 | 13.2 | Backend | 4d? | 2026-03-25 A | 2026-03-30 A |  | 100% |  |  |  |  |  | finish no earlier than 2026-03-30 | Rishabh | 32h | 32h |
| 56 | 14 | **Affiliate** | 10d? | 2026-02-19 | 2026-03-04 |  | 83% | 1.75d? | 2025-11-15 |  |  |  |  |  | 848h | 699.68h |
| 57 | 14.1 | AirPeace Payment Pages/V2 changes | 1d? | 2026-02-19 A | 2026-02-19 A |  | 100% |  |  |  |  |  |  | Vakil | 8h | 8h |
| 58 | 14.2 | Refund Enhancement | 34d? | 2026-04-01 A | 2026-05-18 |  | 99% | 0.34d? |  |  | 32d |  | finish no earlier than 2026-04-14 | Vakil | 272h | 269.28h |
| 59 | 14.3 | Account Switching: Business<->Individual | 2d? | 2026-02-25 | 2026-02-26 |  |  |  |  |  | 89d |  | finish no earlier than 2026-02-26 | Vakil | 16h |  |
| 60 | 14.4 | Interswitch-Payout | 37d? | 2025-11-15 A | 2026-02-24 |  | 90% | 3.7d? |  |  | 91.3d |  |  | Sakshi | 296h | 266.4h |
| 61 | 14.5 | Flex POC | 7d? | 2026-04-14 A | 2026-04-22 A |  | 100% |  |  |  |  |  | finish no earlier than 2026-04-22 | Monu | 56h | 56h |
| 62 | 14.6 | FLEX-Backend | 24d? | 2026-04-14 A | 2026-05-15 |  | 50% | 12d? |  |  | 33d |  | start no earlier than 2026-04-14 | Sakshi | 192h | 96h |
| 63 | 14.7 | Affiliate Coordination | 1d? | 2026-04-10 A | 2026-04-10 |  | 50% | 0.5d? |  |  | 58d |  | start no earlier than 2026-04-10 | Sakshi | 8h | 4h |

Notes:
- 34: KYC to be done after 1st TXN / Session mgmt
- 53: Front-end

| ID | WBS | Task | Duration | Start | Finish | Predecessors | Complete | Remaining | Total slack | Constraint | Resources | Work | Actual work |
| --- | --- | --- | --- | --- | --- | --- | --- | --- | --- | --- | --- | --- | --- |
| 65 | 15 | **MITO-Admin** | 95d? | 2026-02-19 A | 2026-07-01 |  | 32% | 65.02d? | 0d |  |  | 360h | 113.6h |
| 66 | 15.1 | 7811 – Movement to Retail Submission: Bug Fixes | 1d? | 2026-02-19 A | 2026-02-19 A |  | 100% |  |  |  | Sakshi | 8h | 8h |
| 67 | 15.2 | Config..Sttic Pages | 44d? | 2026-05-01 A | 2026-07-01 |  | 30% | 30.8d? | 0d | finish no earlier than 2026-07-01 | Sakshi | 352h | 105.6h |
| 69 | 16 | **Testing** | 10d? | 2026-02-19 A | 2026-03-04 |  | 64% | 3.55d? |  |  |  | 745.6h | 480.8h |
| 70 | 16.1 | 7925 – Interswitch | 30d? | 2026-03-20 A | 2026-04-30 |  | 50% | 15d? | 44d | finish no earlier than 2026-04-30 | Robin | 240h | 120h |
| 71 | 16.2 | 8002: (App) Ticketsir: booking for pre sale and waitlist app | 1d? | 2026-02-25 A | 2026-02-25 A |  | 100% |  |  | finish no earlier than 2026-02-25 | Robin | 8h | 8h |
| 72 | 16.3 | 8054: Date Caption changes | 1d? | 2026-02-26 A | 2026-02-26 A | 71 | 100% |  |  |  | Robin | 8h | 8h |
| 73 | 16.4 | Role based | 8d? | 2026-03-13 A | 2026-03-24 A |  | 100% |  |  | finish no earlier than 2026-03-24 | Robin | 64h | 64h |
| 74 | 16.5 | OBO | 19d? | 2026-03-18 A | 2026-05-08 |  | 30% | 13.3d? | 38d | finish no earlier than 2026-05-08 | Robin | 152h | 45.6h |
| 75 | 16.6 | Help Tickets Web | 5d? | 2026-04-03 A | 2026-04-09 A |  | 100% |  |  | finish no earlier than 2026-04-09 | Robin | 40h | 40h |
| 76 | 16.7 | Help Tickets App | 2d? | 2026-04-08 A | 2026-04-09 A |  | 100% |  |  | finish no earlier than 2026-04-09 | Robin | 16h | 16h |
| 77 | 16.8 | Ticketsir DB Migration | 24d? | 2026-03-13 A | 2026-04-15 |  | 80% | 4.8d? | 55d | finish no earlier than 2026-04-15 | Robin | 192h | 153.6h |
| 78 | 16.9 | Flex POC | 3.2d? | 2026-02-19 A | 2026-04-27 A | 61 | 100% |  |  | finish no earlier than 2026-04-27 | Robin | 25.6h | 25.6h |
| 80 | 17 | **Integrations** | 16d? | 2026-04-10 A | 2026-05-01 |  | 74% | 4.21d? | 43d |  |  | 152h | 112h |
| 81 | 17.1 | Plaid for Rhemito | 14d? | 2026-04-14 A | 2026-05-01 |  | 65% | 4.9d? | 0d | finish no earlier than 2026-05-01 | Vakil | 112h | 72.8h |
| 82 | 17.2 | SDK-MITO | 1d? | 2026-04-24 A | 2026-04-29 |  | 90% | 0.1d? | 45d | finish no earlier than 2026-04-29 | Vakil | 8h | 7.2h |
| 83 | 17.3 | Mobile App Platform and Environment Update | 4d? | 2026-04-10 A | 2026-04-15 A |  | 100% |  |  | finish no earlier than 2026-04-15 | Jayant | 32h | 32h |

Notes:
- 66: ·Transactions stuck with status In Progress. / ·Warning: Transaction resulted in a loss
